# SRL-STNBOX

Schedule from Primavera P6, 2026-03-02 to 2027-03-03, data date 2026-06-15, A marks actual dates.
Must finish by 2027-03-03

## Schedule

| ID | WBS | Activity | Duration | Start | Finish | Predecessors | Complete | Remaining | Total float |
| --- | --- | --- | --- | --- | --- | --- | --- | --- | --- |
|  | FINISH | **FINISH works** |  | 2027-02-01 | 2027-03-03 |  |  |  |  |
| A5020 |  | Backfill & reinstatement | 10d | 2027-02-01 | 2027-02-15 | A4030, A3050 |  |  | 12d |
| A5030 |  | Final finishes & handover prep | 12d | 2027-02-15 | 2027-03-03 | A5010, A5020 |  |  | 0d |
|  | MEP | **MEP works** |  | 2026-10-29 | 2026-12-29 |  |  |  |  |
| A5000 |  | MEP first fix - concourse | 15d | 2026-10-29 | 2026-11-19 | A4010 |  |  | 74d |
| A5010 |  | MEP first fix - platform | 15d | 2026-12-08 | 2026-12-29 | A4030 |  |  | 46d |
|  | PREP | **PREP works** |  | 2026-03-02 | 2026-04-16 |  |  |  |  |
| A1000 |  | Site establishment & enabling works | 10d | 2026-03-02 A | 2026-03-16 A |  | 100% |  |  |
| A1010 |  | Utility diversions | 15d | 2026-03-16 A | 2026-04-06 A | A1000 | 100% |  |  |
| A1020 |  | Piling mat construction | 8d | 2026-04-06 A | 2026-04-16 A | A1010 | 100% |  |  |
|  | SHAFT | **SHAFT works** |  | 2026-04-16 | 2026-08-26 |  |  |  |  |
| A2000 |  | Secant pile wall - North | 20d | 2026-04-16 A | 2026-05-14 A | A1020 | 100% |  |  |
| A2010 |  | Secant pile wall - South | 26d | 2026-04-16 A | 2026-05-22 A | A1020 | 100% |  |  |
| A2020 |  | Capping beam installation | 10d | 2026-05-22 A | 2026-06-05 A | A2000, A2010 | 100% |  |  |
| A2030 |  | Bulk excavation - Stage 1 (to L1 prop) | 12d | 2026-06-05 A | 2026-06-23 | A2020 | 100% | 0d | 181d |
| A2040 |  | Prop installation - Level 1 | 6d | 2026-06-23 | 2026-07-01 | A2030 |  |  | 175d |
| A2050 |  | Bulk excavation - Stage 2 (to L2 prop) | 18d | 2026-07-01 | 2026-07-27 | A2040 |  |  | 157d |
| A2060 |  | Prop installation - Level 2 | 6d | 2026-07-27 | 2026-08-04 | A2050 |  |  | 151d |
| A2070 |  | Bulk excavation - Stage 3 (formation level) | 16d | 2026-08-04 | 2026-08-26 | A2060 |  |  | 135d |
|  | STRUCT | **STRUCT works** |  | 2026-08-26 | 2026-12-08 |  |  |  |  |
| A3000 |  | Base slab reinforcement & pour | 12d | 2026-08-26 | 2026-09-11 | A2070 |  |  | 123d |
| A4000 |  | Station box walls - concourse level | 20d | 2026-09-11 | 2026-10-09 | A3000 |  |  | 103d |
| A4010 |  | Station box slab - concourse level | 14d | 2026-10-09 | 2026-10-29 | A4000 |  |  | 89d |
| A4020 |  | Station box walls - platform level | 20d | 2026-10-29 | 2026-11-26 | A4010 |  |  | 69d |
| A4030 |  | Waterproofing - platform level | 8d | 2026-11-26 | 2026-12-08 | A4020 |  |  | 61d |

| ID | WBS | Activity | Duration | Start | Finish | Predecessors | Total float |
| --- | --- | --- | --- | --- | --- | --- | --- |
|  | TBM | **TBM works** |  | 2026-09-11 | 2027-02-01 |  |  |
| A3010 |  | TBM launch chamber fit-out | 15d | 2026-09-11 | 2026-10-02 | A3000 | 108d |
| A3020 |  | TBM delivery & assembly | 26d | 2026-10-02 | 2026-11-09 | A3010 | 82d |
| A3030 |  | TBM launch & initial drive | 10d | 2026-11-09 | 2026-11-23 | A3020 | 72d |
| A3040 |  | TBM drive - Section 1 | 25d | 2026-11-23 | 2026-12-28 | A3030 | 47d |
| A3050 |  | TBM drive - Section 2 | 25d | 2026-12-28 | 2027-02-01 | A3040 | 22d |
